# Курсовая в проджекте

Schedule from MS Project, 2022-12-16 to 2023-02-27, costs in ₽.
SPecialiST RePack

## Calendars

- Стандартный: Mon-Fri 09:00-13:00, 14:00-18:00; Sat-Sun off.

## Resources

| Resource | Group | Rate |
| --- | --- | --- |
| Руководитель проекта | Внутренние | 312.5 |
| Технический директор проекта | Внутренние | 250 |
| Бухгалтер проекта | Внутренние | 250 |
| Бизнес-аналитик проекта | Внутренние | 187.5 |
| Системный аналитик проекта | Внутренние | 187.5 |
| Ведущий разработчик | Внутренние | 218.75 |
| Системный администратор | Внутренние | 187.5 |
| Эникейщик | Внутренние | 125 |
| Рядовые пользователи | Внешние |  |
| Инженер-тестировщик | Внутренние | 125 |
| Компьютер |  | 60000 |
| МФУ |  | 20000 |
| Роутер |  | 8000 |
| Маршрутизатор |  | 3000 |
| Ретранслятор |  | 3000 |
| Сервер |  | 150000 |
| Программный продукт учета обмена валют |  |  |
| Телефонная связь |  |  |
| Интернет |  |  |

## Schedule

| ID | WBS | Task | Type | Duration | Start | Finish | Predecessors | Total slack | Resources | Work | Cost |
| --- | --- | --- | --- | --- | --- | --- | --- | --- | --- | --- | --- |
| 1 | 1 | **Проект внедрения системы учёта обмена валют** |  | 52d | 2022-12-16 | 2023-02-27 |  | 0d |  | 580h | 1,356,875 |
| 2 | 1.1 | **Этап 1. Предварительный анализ** |  | 10d | 2022-12-16 | 2022-12-29 |  | 0d |  | 92h | 21,750 |
| 3 | 1.1.1 | Сбор требований по проекту |  | 3d | 2022-12-16 | 2022-12-20 |  | 0d | Бизнес-аналитик проекта; Руководитель проекта | 24h | 6,000 |
| 4 | 1.1.2 | Анализ деятельности компании |  | 5d | 2022-12-21 | 2022-12-27 | 3 | 0d | Бизнес-аналитик проекта; Системный аналитик проекта | 34h | 6,375 |
| 5 | 1.1.3 | Анализ внешней среды |  | 3d | 2022-12-21 | 2022-12-23 | 3 | 6d | Руководитель проекта; Системный аналитик проекта | 18h | 4,875 |
| 6 | 1.1.4 | Создание рабочей группы |  | 2d | 2022-12-28 | 2022-12-29 | 4 | 0d | Руководитель проекта; Технический директор проекта | 16h | 4,500 |
| 7 | 1.2 | **Этап 2. Подготовительные процедуры** |  | 8d | 2022-12-30 | 2023-01-10 |  | 0d |  | 100h | 21,750 |
| 8 | 1.2.1 | Распределение полномочий и ответственности |  | 2d | 2022-12-30 | 2023-01-02 | 6 | 0d | Ведущий разработчик; Системный аналитик проекта; Технический директор проекта | 24h | 5,250 |
| 9 | 1.2.2 | Анализ информационного окружения |  | 3d | 2023-01-03 | 2023-01-05 | 5, 8 | 0d | Системный аналитик проекта; Технический директор проекта | 12h | 2,625 |
| 10 | 1.2.3 | Формирование технического проекта |  | 3d | 2023-01-06 | 2023-01-10 | 9 | 0d | Ведущий разработчик; Системный аналитик проекта; Технический директор проекта | 40h | 8,625 |
| 11 | 1.2.4 | Анализ IT-инфраструктуры |  | 3d | 2023-01-03 | 2023-01-05 | 5, 8 | 3d | Ведущий разработчик; Системный аналитик проекта; Технический директор проекта | 24h | 5,250 |
| 12 | 1.3 | **Этап 3. Закупка** |  | 11d | 2023-01-11 | 2023-01-25 |  | 0d |  | 136h | 30,125 |
| 13 | 1.3.1 | Подбор поставщиков |  | 3d | 2023-01-11 | 2023-01-13 | 10, 11 | 0d | Руководитель проекта; Технический директор проекта | 36h | 10,500 |
| 14 | 1.3.2 | Соствление закупочного перечня |  | 3d | 2023-01-16 | 2023-01-18 | 13 | 0d | Ведущий разработчик; Системный администратор; Технический директор проекта | 36h | 7,875 |
| 15 | 1.3.3 | Приобретение |  | 5d | 2023-01-19 | 2023-01-25 | 14 | 0d | Бухгалтер проекта; Системный администратор; Эникейщик | 64h | 11,750 |
| 16 | 1.4 | **Этап 4. Внедрение проекта** |  | 8d | 2023-01-26 | 2023-02-06 |  | 0d |  | 60h | 1,245,500 |
| 17 | 1.4.1 | Установка и монтаж оборудования |  | 4d | 2023-01-26 | 2023-01-31 | 15 | 0d | Компьютер [1000%]; Маршрутизатор [200%]; МФУ [500%]; Ретранслятор [200%]; Роутер [300%]; Сервер [200%]; Системный администратор; Эникейщик | 32h | 1,041,000 |
| 18 | 1.4.2 | Установка ПО |  | 2d | 2023-02-01 | 2023-02-02 | 17 | 0d | Программный продукт учета обмена валют [0.1%]; Системный администратор | 8h | 201,500 |
| 19 | 1.4.3 | Настройка оборудования и ПО |  | 2d | 2023-02-03 | 2023-02-06 | 17, 18 | 0d | Программный продукт учета обмена валют [0.1%]; Системный администратор; Эникейщик | 20h | 3,000 |
| 20 | 1.5 | **Этап 5. Завершение** |  | 15d | 2023-02-07 | 2023-02-27 |  | 0d |  | 192h | 37,750 |
| 21 | 1.5.1 | Тестирование работоспособности |  | 7d | 2023-02-07 | 2023-02-15 | 19 | 0d | Инженер-тестировщик; Системный администратор; Технический директор проекта | 100h | 19,750 |
| 22 | 1.5.2 | Передача системы в эксплуатацию и инструктаж клиентов |  | 7d | 2023-02-16 | 2023-02-24 | 21 | 0d | Руководитель проекта; Рядовые пользователи; Технический директор проекта | 84h | 15,750 |
| 23 | 1.5.3 | Подписание акта выполненных работ |  | 1d | 2023-02-27 | 2023-02-27 | 22 | 0d | Бухгалтер проекта; Руководитель проекта | 8h | 2,250 |
| 24 | 1.6 | Завершение | milestone | 0d | 2023-02-27 | 2023-02-27 | 23 | 0d |  |  |  |
